# GPEV3

Schedule from MS Project, 2026-03-19 to 2026-06-09, costs in €.

## Calendars

- Standard: Mon-Fri 08:00-12:00, 13:00-17:00; Sat-Sun off.

## Resources

| Resource | Group | Rate |
| --- | --- | --- |
| Project Leader | Tier 120 / Internal | 120 |
| Radio Engineer (Sr) | Tier 120 / Internal | 120 |
| Law Officer | Tier 120 / Internal | 120 |
| Radio Engineers | Tier 100 / Internal | 100 |
| Regulation Officers | Tier 100 / Internal | 100 |
| Finance / Mgmt Analyst | Tier 100 / Internal | 100 |
| Buying Officer | Tier 100 / Internal | 80 |
| Marketing Specialist | Tier 100 / Internal | 80 |
| Constructor Consulting Fee |  | 100 |
| Cybersecurity Consulting Fee |  | 120 |
| Regulatory & Licence Fees | Materials / Services | 3500 |
| Classification Society Certs | Materials / Services | 2300 |
| Shipping & Logistics | Materials / Services | 1000 |
| Indoor Cellular Base Station | Materials / Hardware | 3000 |
| Maritime Wi-Fi 6 Access Point | Materials / Hardware | 50 |
| Indoor Antenna | Materials / Hardware | 80 |
| Deck / Outdoor Antenna | Materials / Hardware | 30000 |
| Structural Cable (CAT6A / Fibre) | Materials / Hardware | 5000 |
| Network Switch / Gateway | Materials / Hardware | 50 |
| Power & UPS Module | Materials / Hardware | 2500 |
| RF Propagation Software | Materials / Software | 5000 |
| Satellite Signup Fee | Materials / Services | 5000 |

## Schedule

| ID | WBS | Task | Type | Duration | Start | Finish | Predecessors | Total slack | Free slack | Resources | Work | Cost | Text1 |
| --- | --- | --- | --- | --- | --- | --- | --- | --- | --- | --- | --- | --- | --- |
| 1 | 1 | **MV World Voyager Communications** |  | 58.5d | 2026-03-19 | 2026-06-09 |  | 0d |  |  | 1079.8h | 214,476 |  |
| 2 | 1.1 | PM |  | 58.5d | 2026-03-19 | 2026-06-09 |  | 0d |  | Project Leader [25%] | 117h | 14,040 | PM |
| 3 | 1.2 | **Site Survey and Inputs** |  | 4.5d | 2026-03-19 | 2026-03-25 |  | 0d |  |  | 58h | 6,128 |  |
| 4 | 1.2.1 | Project Kick-off | milestone | 0d | 2026-03-19 | 2026-03-19 |  | 0d |  |  |  |  | M1 |
| 5 | 1.2.2 | Gather Ship Data and Analyse Deck Layout |  | 3.5d | 2026-03-19 | 2026-03-24 | 4 | 0d |  | Constructor Consulting Fee [20%]; Radio Engineer (Sr) [30%]; Radio Engineers | 42h | 4,368 |  |
| 6 | 1.2.3 | Visit and Rank Candidate Locations |  | 1d | 2026-03-24 | 2026-03-25 | 5 | 0d |  | Radio Engineer (Sr); Constructor Consulting Fee | 16h | 1,760 |  |
| 7 | 1.3 | **Radio Design** |  | 6d | 2026-03-25 | 2026-04-02 |  | 0d |  |  | 110.4h | 11,168 |  |
| 8 | 1.3.1 | Wi-Fi AP Layout and Service Zone Design |  | 2d | 2026-03-27 | 2026-03-31 | 6FS+2d | 3d |  | Radio Engineer (Sr) [10%]; Radio Engineers; Constructor Consulting Fee [5%]; Regulation Officers [10%]; Marketing Specialist [20%]; Cybersecurity Consulting Fee [20%] | 26.4h | 2,672 |  |
| 9 | 1.3.2 | **Cellular Design** |  | 6d | 2026-03-25 | 2026-04-02 |  | 0d |  |  | 84h | 8,496 |  |
| 10 | 1.3.2.1 | Coverage and Base Station Layout |  | 4d | 2026-03-25 | 2026-03-31 | 6 | 0d |  | Radio Engineer (Sr) [10%]; Radio Engineers [150%]; Constructor Consulting Fee [5%]; Regulation Officers [10%] | 56h | 5,664 |  |
| 11 | 1.3.2.2 | Antenna and Cabling Paths |  | 2d | 2026-03-31 | 2026-04-02 | 10 | 1d |  | Radio Engineer (Sr) [10%]; Constructor Consulting Fee [30%]; Radio Engineers; Regulation Officers [10%] | 28h | 2,832 |  |
| 12 | 1.4 | **Infrastructure Design** |  | 13d | 2026-03-31 | 2026-04-17 |  | 0d |  |  | 159.2h | 16,224 |  |
| 13 | 1.4.1 | Backhaul and Core Interconnection |  | 3d | 2026-03-31 | 2026-04-03 | 10 | 0d |  | Radio Engineers; Radio Engineer (Sr) [10%]; Cybersecurity Consulting Fee [50%]; Regulation Officers [10%] | 40.8h | 4,368 |  |
| 14 | 1.4.2 | Cabling, Power and Telecom Room Design |  | 5d | 2026-04-03 | 2026-04-10 | 11, 13, 8 | 0d |  | Constructor Consulting Fee [15%]; Radio Engineer (Sr) [10%]; Radio Engineers [150%] | 70h | 7,080 |  |
| 15 | 1.4.3 | Design Baseline Approval | milestone | 0d | 2026-04-10 | 2026-04-10 | 14 | 0d |  |  |  |  | M2 |
| 16 | 1.4.4 | **Equipment Selection** |  | 5d | 2026-04-10 | 2026-04-17 |  | 0d |  |  | 48.4h | 4,776 |  |
| 17 | 1.4.4.1 | Hardware Technical Specifications |  | 3d | 2026-04-10 | 2026-04-15 | 15 | 0d |  | Regulation Officers [15%]; Radio Engineers | 27.6h | 2,760 |  |
| 18 | 1.4.4.2 | Prepare Bill of Materials |  | 2d | 2026-04-15 | 2026-04-17 | 17 | 0d |  | Finance / Mgmt Analyst [50%]; Buying Officer [50%]; Radio Engineer (Sr) [30%] | 20.8h | 2,016 |  |
| 19 | 1.5 | **Regulation and Compliance** |  | 10d | 2026-04-10 | 2026-04-24 |  | 2d |  |  | 146h | 21,408 |  |
| 20 | 1.5.1 | **Spectrum and Operational Compliance** |  | 7d | 2026-04-10 | 2026-04-21 |  | 0d |  |  | 98h | 10,328 |  |
| 21 | 1.5.1.1 | Set Roaming Parameters |  | 2d | 2026-04-10 | 2026-04-14 | 15 | 3d |  | Regulation Officers; Law Officer [15%]; Radio Engineer (Sr) [15%] | 20.8h | 2,176 |  |
| 22 | 1.5.1.2 | Design Port Shutdown Logic |  | 3d | 2026-04-14 | 2026-04-17 | 15FS+2d | 0d |  | Regulation Officers [15%]; Radio Engineer (Sr) [70%]; Radio Engineers [150%] | 56.4h | 5,976 |  |
| 23 | 1.5.1.3 | Regulatory Conformity Analysis |  | 2d | 2026-04-17 | 2026-04-21 | 18, 21, 22 | 0d |  | Regulation Officers; Law Officer [20%]; Radio Engineer (Sr) [10%] | 20.8h | 2,176 |  |
| 24 | 1.5.2 | External Approvals, Agreements and Compliance matrix |  | 3d | 2026-04-21 | 2026-04-24 | 23 | 4d | 0d | Law Officer; Regulation Officers; Regulatory & Licence Fees; Classification Society Certs | 48h | 11,080 |  |
| 25 | 1.5.3 | Technical Package Completion | milestone | 0d | 2026-04-24 | 2026-04-24 | 24 | 4d |  |  |  |  | M3 |

| ID | WBS | Task | Type | Duration | Start | Finish | Predecessors | Total slack | Resources | Work | Cost | Text1 |
| --- | --- | --- | --- | --- | --- | --- | --- | --- | --- | --- | --- | --- |
| 26 | 1.6 | **Installation Planning** |  | 9d | 2026-04-21 | 2026-05-04 |  | 0d |  | 52.8h | 5,960 |  |
| 27 | 1.6.1 | Detailed Construction Package |  | 2d | 2026-04-21 | 2026-04-23 | 23 | 0d | Constructor Consulting Fee [10%]; Radio Engineers; Finance / Mgmt Analyst [20%] | 20.8h | 2,080 |  |
| 28 | 1.6.2 | Regulatory Approval | milestone | 0d | 2026-04-23 | 2026-04-23 | 27 | 0d |  |  |  | M4 |
| 29 | 1.6.3 | Logistics and Delivery Plan |  | 5d | 2026-04-23 | 2026-04-30 | 28 | 0d | Buying Officer [40%]; Shipping & Logistics | 16h | 2,280 |  |
| 30 | 1.6.4 | Access Permits, Planning and Safety Method Statements |  | 2d | 2026-04-30 | 2026-05-04 | 25, 29 | 0d | Constructor Consulting Fee | 16h | 1,600 |  |
| 31 | 1.6.5 | Procurement and Logistics Completion | milestone | 0d | 2026-05-04 | 2026-05-04 | 30 | 0d |  |  |  | M5 |
| 32 | 1.7 | **Installation and Integration** |  | 11d | 2026-05-04 | 2026-05-19 |  | 0d |  | 292.4h | 119,956 |  |
| 33 | 1.7.1 | Install Cabling, Base Stations, and Antennas |  | 7d | 2026-05-04 | 2026-05-13 | 31 | 0d | Constructor Consulting Fee [300%]; Radio Engineer (Sr) [15%]; Indoor Cellular Base Station [700%]; Indoor Antenna [7000%]; Deck / Outdoor Antenna; Structural Cable (CAT6A / Fibre); Power & UPS Module [700%] | 176.4h | 96,908 |  |
| 34 | 1.7.2 | Install Network Equipment and Wi-Fi APs |  | 4d | 2026-05-05 | 2026-05-11 | 31, 33SS+1d | 2d | Constructor Consulting Fee [200%]; Radio Engineer (Sr) [15%]; Maritime Wi-Fi 6 Access Point [6000%]; Network Switch / Gateway [6000%] | 68.8h | 12,976 |  |
| 35 | 1.7.3 | Service Configuration and Shutdown Integration |  | 3d | 2026-05-13 | 2026-05-18 | 34, 33 | 0d | Radio Engineer (Sr) [20%]; Radio Engineers; Regulation Officers [20%]; Cybersecurity Consulting Fee [20%]; Satellite Signup Fee | 38.4h | 9,032 |  |
| 36 | 1.7.4 | System Commissioning |  | 1d | 2026-05-18 | 2026-05-19 | 35 | 0d | Radio Engineer (Sr); Constructor Consulting Fee [10%] | 8.8h | 1,040 |  |
| 37 | 1.7.5 | Installation and System Commissioned | milestone | 0d | 2026-05-19 | 2026-05-19 | 36 | 0d |  |  |  | M6 |
| 38 | 1.8 | **Testing and Accepting** |  | 4d | 2026-05-19 | 2026-05-25 |  | 0d |  | 46.4h | 9,608 |  |
| 39 | 1.8.1 | Radio and Wi-Fi Coverage and Load Testing |  | 1d | 2026-05-19 | 2026-05-20 | 37 | 0d | Radio Engineer (Sr) [20%]; Radio Engineers; Marketing Specialist; RF Propagation Software | 17.6h | 6,632 |  |
| 40 | 1.8.2 | **End-to-end and Shutdown Validation** |  | 3d | 2026-05-20 | 2026-05-25 |  | 0d |  | 28.8h | 2,976 |  |
| 41 | 1.8.2.1 | End-to-End Connectivity Test |  | 1d | 2026-05-20 | 2026-05-21 | 39 | 0d | Radio Engineer (Sr) [20%]; Radio Engineers | 9.6h | 992 |  |
| 42 | 1.8.2.2 | Port Shutdown Validation |  | 2d | 2026-05-21 | 2026-05-25 | 41 | 0d | Radio Engineer (Sr) [20%]; Radio Engineers | 19.2h | 1,984 |  |
| 43 | 1.8.2.3 | Testing Validation Passed | milestone | 0d | 2026-05-25 | 2026-05-25 | 42 | 0d |  |  |  | M7 |
| 44 | 1.9 | **Documentation and Closeout** |  | 11d | 2026-05-25 | 2026-06-09 |  | 0d |  | 97.6h | 9,984 |  |
| 45 | 1.9.1 | Final Technical Documents Conception |  | 4d | 2026-05-25 | 2026-05-29 | 43 | 0d | Radio Engineer (Sr) [10%]; Radio Engineers [200%]; Regulation Officers [60%]; Constructor Consulting Fee [10%] | 89.6h | 9,024 |  |
| 46 | 1.9.2 | Handover and Sign-off |  | 1d | 2026-05-29 | 2026-06-01 | 45 | 0d | Radio Engineer (Sr) | 8h | 960 |  |
| 47 | 1.9.3 | Project Handover | milestone | 0d | 2026-06-01 | 2026-06-01 | 46 | 0d |  |  |  | M8 |
| 48 | 1.9.4 | Buffer |  | 6d | 2026-06-01 | 2026-06-09 | 47 | 0d |  |  |  | Buffer |
| 49 | 1.9.5 | Project end | milestone | 0d | 2026-06-09 | 2026-06-09 | 48 | 0d |  |  |  | Project End |
